# proyecto CRM PI

Schedule from MS Project, 2023-05-15 to 2023-10-25, A marks actual dates.

## Calendars

- Estándar: Mon-Fri 09:00-13:00, 15:00-19:00; Sat-Sun off.

## Schedule

| ID | WBS | Task | Type | Duration | Start | Finish | Predecessors | Complete | Remaining | Total slack | Free slack | Constraint | Deadline |
| --- | --- | --- | --- | --- | --- | --- | --- | --- | --- | --- | --- | --- | --- |
| 1 | 1 | Diseño logico y fisico de la BD |  | 10d | 2023-05-15 A | 2023-05-26 A |  | 100% |  |  |  | finish no earlier than 2023-05-26 |  |
| 2 | 2 | Diseño de pantallas y formularios |  | 10d | 2023-06-05 A | 2023-06-16 A | 3 | 100% |  |  |  |  |  |
| 3 | 3 | **Construccion de integradores** |  | 3d | 2023-05-29 A | 2023-05-31 A | 1 | 100% |  |  |  |  |  |
| 4 | 3.1 | Generador de BD |  | 3d | 2023-05-29 A | 2023-05-31 A |  | 100% |  |  |  |  |  |
| 5 | 4 | **Construccion de modulos** |  | 65d? | 2023-06-05 A | 2023-09-01 | 3 | 43% | 37.23d? | 38d |  |  |  |
| 6 | 4.1 | Administracion de Abogados |  | 1d | 2023-06-05 A | 2023-06-05 A | 3 | 100% |  |  |  |  |  |
| 7 | 4.2 | Administracion de agendas |  | 1d | 2023-06-07 A | 2023-06-07 A | 6 | 100% |  |  |  |  |  |
| 8 | 4.3 | Administracion de tipo de boletines |  | 1d | 2023-06-09 A | 2023-06-09 A | 7 | 100% |  |  |  |  |  |
| 9 | 4.4 | Administracion del tipo de publicacion |  | 1d | 2023-06-13 A | 2023-06-13 A | 8 | 100% |  |  |  |  |  |
| 10 | 4.5 | Administracion de Anexos |  | 1d | 2023-06-15 A | 2023-06-15 A | 9 | 100% |  |  |  |  | 2023-06-21 |
| 11 | 4.6 | Administrador de Clases |  | 1d | 2023-06-19 A | 2023-06-19 A | 10 | 100% |  |  |  |  |  |
| 12 | 4.7 | Administrador de Eventos |  | 1d | 2023-06-21 A | 2023-06-21 A | 11 | 100% |  |  |  |  |  |
| 13 | 4.8 | Administrador de Prioridades |  | 1d | 2023-06-22 A | 2023-06-22 A | 12 | 100% |  |  |  |  |  |
| 14 | 4.9 | Administrador de Tipo de Evento |  | 1d | 2023-06-23 A | 2023-06-23 A | 13 | 100% |  |  |  |  |  |
| 15 | 4.10 | Administrador de Publicaciones |  | 1d | 2023-06-26 A | 2023-06-26 A | 14 | 100% |  |  |  |  |  |
| 16 | 4.11 | Administrador de Responsables |  | 1d | 2023-06-27 A | 2023-06-27 A | 15 | 100% |  |  |  |  |  |
| 17 | 4.12 | Administrador de Solicitantes |  | 1d | 2023-06-28 A | 2023-06-28 A | 16 | 100% |  |  |  |  |  |
| 18 | 4.13 | Administrador Tipo Solicitud |  | 1d | 2023-06-30 A | 2023-06-30 A |  | 100% |  |  |  |  |  |
| 19 | 4.14 | Administrador de Clases Niza |  | 1d | 2023-06-30 A | 2023-06-30 A |  | 100% |  |  |  |  |  |
| 20 | 4.15 | Modulo para Correos Personalizados |  | 1d | 2023-07-03 A | 2023-07-03 A | 17 | 100% |  |  |  |  |  |
| 21 | 4.16 | Administrador de Tipos |  | 1d | 2023-07-03 A | 2023-07-03 A |  | 100% |  |  |  |  |  |
| 22 | 4.17 | Solicitud de Marca |  | 10d | 2023-07-10 A | 2023-07-21 | 18 | 75% | 2.5d | 68d |  |  |  |
| 23 | 4.18 | Preview con el cliente para cambios no contemplados | milestone | 0d | 2023-07-20 A | 2023-07-20 A |  | 100% |  |  |  |  |  |
| 24 | 4.19 | **Modulo de Anexos** |  | 8d | 2023-08-02 | 2023-08-11 |  |  |  | 53d |  |  |  |
| 25 | 4.19.1 | Cambios Anteriores al registro |  | 1d | 2023-08-02 | 2023-08-02 |  |  |  | 56d | 0d | start no earlier than 2023-08-02 |  |
| 26 | 4.19.2 | Cambios posteriores al registro |  | 2d | 2023-08-03 | 2023-08-04 | 25 |  |  | 56d | 0d |  |  |
| 27 | 4.19.3 | Licencia de Uso |  | 2d | 2023-08-04 | 2023-08-07 |  |  |  | 55d | 0d | start no earlier than 2023-08-04 |  |
| 28 | 4.19.4 | Cesion |  | 2d | 2023-08-07 | 2023-08-08 | 26 |  |  | 56d |  |  |  |
| 29 | 4.19.5 | Fusion |  | 2d | 2023-08-08 | 2023-08-09 | 27 |  |  | 55d |  |  |  |
| 30 | 4.19.6 | Cambio de Nombre |  | 2d | 2023-08-09 | 2023-08-10 |  |  |  | 54d |  | finish no earlier than 2023-08-10 |  |
| 31 | 4.19.7 | Cambio de Domicilio |  | 2d | 2023-08-10 | 2023-08-11 |  |  |  | 53d |  | start no earlier than 2023-08-10 |  |
| 32 | 4.20 | Modulo de tareas |  | 2d | 2023-08-14 | 2023-08-15 |  |  |  | 51d |  | start no earlier than 2023-08-14 |  |
| 33 | 4.21 | Modulo de propietarios |  | 1d? | 2023-08-15 | 2023-08-15 |  |  |  | 51d |  | start no earlier than 2023-08-15 |  |
| 34 | 4.22 | Modulo de Poderes |  | 1d? | 2023-08-16 | 2023-08-16 |  |  |  | 50d |  | start no earlier than 2023-08-16 |  |
| 35 | 4.23 | Modulo de clases nacionales |  | 1d? | 2023-08-17 | 2023-08-17 |  |  |  | 48d | 0d | start no earlier than 2023-08-17 |  |
| 36 | 4.24 | Modulo de Correspondencia |  | 1d? | 2023-08-18 | 2023-08-18 | 35 |  |  | 48d |  |  |  |
| 37 | 4.25 | Preview de cambios | milestone, manual | 0d | 2023-08-21 | 2023-08-21 |  |  |  |  |  |  |  |
| 38 | 4.26 | Modulo para Expedientes Madre-hijo | manual | 10d | 2023-08-21 | 2023-09-01 |  |  |  |  |  |  |  |
| 39 | 5 | Pruebas de uso | manual | 10d | 2023-09-04 A | 2023-09-15 |  | 20% | 8d |  |  |  |  |

Notes:
- 14: A

| ID | WBS | Task | Type | Duration | Start | Finish | Complete | Remaining | Total slack |
| --- | --- | --- | --- | --- | --- | --- | --- | --- | --- |
| 40 | 6 | **Modulos de Patentes** |  | 65d | 2023-06-19 A | 2023-09-15 | 4% | 62.17d | 0d |
| 41 | 6.1 | Administrador de Inventores | manual | 1d | 2023-06-19 A | 2023-06-19 A | 100% |  |  |
| 42 | 6.2 | Administrador de Prioridades de Patentes | manual | 2d | 2023-06-30 | 2023-07-01 |  |  |  |
| 43 | 6.3 | Administrador de tipos de patentes | manual | 2d | 2023-09-01 | 2023-09-02 |  |  |  |
| 44 | 6.4 | Administrador de Eventos de patentes | manual | 2d | 2023-09-04 | 2023-09-05 |  |  |  |
| 45 | 6.5 | Administrador de tareas de patentes | manual | 2d | 2023-09-06 | 2023-09-07 |  |  |  |
| 46 | 6.6 | **Administrador de anexos** |  | 6d | 2023-09-04 | 2023-09-11 |  |  | 0d |
| 47 | 6.6.1 | Cesion | manual | 1d | 2023-09-04 | 2023-09-04 |  |  |  |
| 48 | 6.6.2 | Licencia | manual | 2d | 2023-09-04 | 2023-09-05 |  |  |  |
| 49 | 6.6.3 | Fusion | manual | 2d | 2023-09-05 | 2023-09-06 |  |  |  |
| 50 | 6.6.4 | Cambio de Nombre | manual | 2d | 2023-09-06 | 2023-09-07 |  |  |  |
| 51 | 6.6.5 | Cambio Domicilio | manual | 3d | 2023-09-07 | 2023-09-11 |  |  |  |
| 52 | 6.7 | Modulo de correspondencia de Patentes | manual | 3d | 2023-09-12 | 2023-09-14 |  |  |  |
| 53 | 6.8 | Preview con el cliente para cambios de ultima hora | manual | 1d | 2023-09-15 | 2023-09-15 |  |  |  |
| 54 | 7 | **Modulos de Derecho de autor** |  | 12d | 2023-10-09 | 2023-10-24 |  |  | 0d |
| 55 | 7.1 | Diseño de modelo logico de base de datos | manual | 6d | 2023-10-09 | 2023-10-16 |  |  |  |
| 56 | 7.2 | Artes Visuales | manual | 2d | 2023-10-10 | 2023-10-11 |  |  |  |
| 57 | 7.3 | Programas de computacion y Bases de datos | manual | 2d | 2023-10-11 | 2023-10-12 |  |  |  |
| 58 | 7.4 | Obras Musicales | manual | 1d | 2023-10-12 | 2023-10-12 |  |  |  |
| 59 | 7.5 | Producciones Fonograficas | manual | 2d | 2023-10-16 | 2023-10-17 |  |  |  |
| 60 | 7.6 | Obras Audiovisuales y Radiofonicas | manual | 2d | 2023-10-17 | 2023-10-18 |  |  |  |
| 61 | 7.7 | Obras Escenicas | manual | 2d | 2023-10-18 | 2023-10-19 |  |  |  |
| 62 | 7.8 | Interpretaciones o ejecuciones Artisticas | manual | 2d | 2023-10-19 | 2023-10-20 |  |  |  |
| 63 | 7.9 | Registro de artes visuales | manual | 2d | 2023-10-23 | 2023-10-24 |  |  |  |
| 64 | 8 | Preview de cambios con el cliente | manual | 1d | 2023-10-25 | 2023-10-25 |  |  |  |
